# p3

Schedule from MS Project, 2019-07-10 to 2020-04-02, 3 hours a day, costs in ৳, A marks actual dates.

## Calendars

- Standard: Mon 06:00-09:00; Tue 06:00-21:00; Wed-Thu 18:00-21:00; Fri-Sat off; Sun 18:00-21:00. Exceptions (off unless hours are given): 2019-08-09 to 2019-08-17 (eid), 2019-08-30 to 2019-09-07 (mid break), 2019-09-10 (asura), 2019-10-25 to 2020-02-02 (pl,exam,industrial training), 2020-02-21 (21st february), 2020-03-26 (independence day).

## Resources

| Resource | Rate |
| --- | --- |
| sumaiya |  |
| Nafiz |  |
| Mahin |  |
| Ajmir |  |
| Jhumu |  |
| Tarek |  |
| Laptop |  |
| Fingerprint sensor | 5000 |
| ARDUINO | 500 |
| LED | 200 |
| Alarm | 1000 |

## Schedule

| ID | WBS | Task | Type | Duration | Start | Finish | Predecessors | Complete | Remaining | Baseline start | Baseline finish | Baseline duration | Total slack | Constraint | Resources | Work | Actual work | Cost | Baseline cost |
| --- | --- | --- | --- | --- | --- | --- | --- | --- | --- | --- | --- | --- | --- | --- | --- | --- | --- | --- | --- |
| 1 | 1 | **MAAS** |  | 193d | 2019-07-10 A | 2020-04-02 |  | 38% | 118.93d | 2019-07-10 | 2020-04-14 | 207d | 0d |  |  | 1377h | 528h | 7,500 | 7,500 |
| 2 | 1.1 | **INITIATION** |  | 36d | 2019-07-10 A | 2019-08-06 A |  | 100% |  | 2019-07-10 | 2019-08-07 | 40.5d |  |  |  | 243h | 243h |  |  |
| 3 | 1.1.1 | grouping | milestone | 0d | 2019-07-10 A | 2019-07-10 A |  | 100% |  | 2019-07-10 | 2019-07-10 | 0d |  |  | Ajmir; Jhumu; Mahin; Nafiz; sumaiya; Tarek |  |  |  |  |
| 4 | 1.1.2 | **Project Idea** |  | 9d | 2019-07-10 A | 2019-07-17 A |  | 100% |  | 2019-07-10 | 2019-07-17 | 9d |  |  |  | 63h | 63h |  |  |
| 5 | 1.1.2.1 | discussion |  | 2d | 2019-07-10 A | 2019-07-11 A |  | 100% |  | 2019-07-10 | 2019-07-11 | 2d |  |  | Jhumu; Mahin; Nafiz; sumaiya; Tarek | 30h | 30h |  |  |
| 6 | 1.1.2.2 | idea sharing |  | 2d | 2019-07-14 A | 2019-07-15 A | 5 | 100% |  | 2019-07-14 | 2019-07-15 | 2d |  |  | Jhumu; Mahin; Nafiz; sumaiya; Tarek | 30h | 30h |  |  |
| 7 | 1.1.2.3 | best 4 idea selection | milestone | 0d | 2019-07-15 A | 2019-07-15 A | 6 | 100% |  | 2019-07-15 | 2019-07-15 | 0d |  |  | Ajmir; Jhumu; Mahin; Nafiz; sumaiya; Tarek |  |  |  |  |
| 8 | 1.1.2.4 | report |  | 1d | 2019-07-16 A | 2019-07-16 A | 7 | 100% |  | 2019-07-16 | 2019-07-16 | 1d |  | start no earlier than 2019-07-16 | Jhumu; Nafiz; sumaiya; Laptop [0.1%] | 3h | 3h |  |  |
| 9 | 1.1.2.5 | presentation | milestone | 0d | 2019-07-17 A | 2019-07-17 A |  | 100% |  | 2019-07-17 | 2019-07-17 | 0d |  | start no earlier than 2019-07-17 | Ajmir; Nafiz; Tarek; Laptop |  |  |  |  |
| 10 | 1.1.3 | **Proposal** |  | 10d | 2019-07-17 A | 2019-07-24 A |  | 100% |  | 2019-07-17 | 2019-07-24 | 10d |  |  |  | 18h | 18h |  |  |
| 11 | 1.1.3.1 | Project approval |  | 3d | 2019-07-17 A | 2019-07-21 A | 9 | 100% |  | 2019-07-17 | 2019-07-21 | 3d |  |  |  |  |  |  |  |
| 12 | 1.1.3.2 | Selection |  | 2d | 2019-07-22 A | 2019-07-23 A | 11 | 100% |  | 2019-07-22 | 2019-07-23 | 2d |  |  |  |  |  |  |  |
| 13 | 1.1.3.3 | Market Analysis |  | 1d | 2019-07-23 A | 2019-07-23 A | 12 | 100% |  | 2019-07-23 | 2019-07-23 | 1d |  |  | Mahin; Nafiz; Tarek; Laptop [0.1%] | 9h | 9h |  |  |
| 14 | 1.1.3.4 | presentation |  | 1d | 2019-07-24 A | 2019-07-24 A |  | 100% |  | 2019-07-24 | 2019-07-24 | 1d |  | start no earlier than 2019-07-24 | Ajmir; Jhumu; sumaiya | 9h | 9h |  |  |
| 15 | 1.1.3.5 | topic finalization | milestone | 0d | 2019-07-24 A | 2019-07-24 A | 14 | 100% |  | 2019-07-24 | 2019-07-24 | 0d |  |  |  |  |  |  |  |
| 16 | 1.1.4 | **plan** |  | 17d | 2019-07-25 A | 2019-08-06 A |  | 100% |  | 2019-07-25 | 2019-08-06 | 17d |  |  |  | 162h | 162h |  |  |
| 17 | 1.1.4.1 | **project modeling** |  | 17d | 2019-07-25 A | 2019-08-06 A |  | 100% |  | 2019-07-25 | 2019-08-06 | 17d |  |  |  | 162h | 162h |  |  |
| 18 | 1.1.4.1.1 | project feature specification |  | 4d | 2019-07-25 A | 2019-07-30 A | 15 | 100% |  | 2019-07-25 | 2019-07-30 | 4d |  |  | Mahin; Nafiz; Tarek | 36h | 36h |  |  |
| 19 | 1.1.4.1.2 | presentation |  | 1d | 2019-07-30 A | 2019-07-30 A | 18 | 100% |  | 2019-07-30 | 2019-07-30 | 1d |  |  | Ajmir; Jhumu; Mahin; Nafiz; sumaiya; Tarek | 12h | 12h |  |  |
| 20 | 1.1.4.1.3 | approval | milestone | 0d | 2019-07-30 A | 2019-07-30 A | 19 | 100% |  | 2019-07-30 | 2019-07-30 | 0d |  |  |  |  |  |  |  |
| 21 | 1.1.4.1.4 | use case diagram |  | 11d | 2019-07-30 A | 2019-08-06 A | 20 | 100% |  | 2019-07-30 | 2019-08-06 | 6d |  | finish no earlier than 2019-08-06 | Ajmir; Laptop [0.1%] | 33h | 33h |  |  |
| 22 | 1.1.4.1.5 | context diagram |  | 5d | 2019-07-30 A | 2019-08-01 A | 20 | 100% |  | 2019-07-30 | 2019-08-05 | 5d |  | finish no earlier than 2019-08-05 | Jhumu; Laptop [0.1%] | 15h | 15h |  |  |
| 23 | 1.1.4.1.6 | class diagram |  | 5d | 2019-07-30 A | 2019-08-01 A | 20 | 100% |  | 2019-07-30 | 2019-08-05 | 5d |  | finish no earlier than 2019-08-05 | Mahin; Laptop [0.1%] | 15h | 15h |  |  |
| 24 | 1.1.4.1.7 | sequential diagram |  | 5d | 2019-07-30 A | 2019-08-01 A | 20 | 100% |  | 2019-07-30 | 2019-08-05 | 5d |  | finish no earlier than 2019-08-05 | Nafiz; Laptop [0.1%] | 15h | 15h |  |  |
| 25 | 1.1.4.1.8 | data flow diagram |  | 5d | 2019-07-30 A | 2019-08-01 A | 20 | 100% |  | 2019-07-30 | 2019-08-05 | 5d |  | finish no earlier than 2019-08-05 | Tarek; Laptop [0.1%] | 15h | 15h |  |  |
| 26 | 1.1.4.1.9 | SRS |  | 7d | 2019-07-30 A | 2019-08-05 A | 20 | 100% |  | 2019-07-30 | 2019-08-05 | 7d |  | finish no earlier than 2019-08-05 | sumaiya | 21h | 21h |  |  |
| 27 | 1.1.4.1.10 | plan approval | milestone | 2d | 2019-08-01 A | 2019-08-06 A | 26 | 100% |  | 2019-08-01 | 2019-08-06 | 2d |  |  |  |  |  |  |  |

| ID | WBS | Task | Type | Duration | Start | Finish | Predecessors | Complete | Remaining | Baseline start | Baseline finish | Baseline duration | Total slack | Constraint | Resources | Work | Actual work | Cost | Baseline cost |
| --- | --- | --- | --- | --- | --- | --- | --- | --- | --- | --- | --- | --- | --- | --- | --- | --- | --- | --- | --- |
| 28 | 1.2 | **hw and sw analysis** |  | 8d | 2019-08-06 A | 2019-08-18 A | 26 | 100% |  | 2019-08-06 | 2019-08-18 | 8d |  |  |  | 78h | 78h |  |  |
| 29 | 1.2.1 | buy hw and specification |  | 8d | 2019-08-06 A | 2019-08-18 A | 26 | 100% |  | 2019-08-06 | 2019-08-18 | 8d |  |  | Nafiz; Tarek | 48h | 48h |  |  |
| 30 | 1.2.2 | software specification |  | 5d | 2019-08-06 A | 2019-08-06 A | 26 | 100% |  | 2019-08-06 | 2019-08-06 | 5d |  |  | Jhumu; Mahin | 30h | 30h |  |  |
| 31 | 1.3 | **execution** |  | 84d | 2019-08-19 A | 2020-02-09 |  | 27% | 61.25d | 2019-08-08 | 2020-02-18 | 100d | 0d |  |  | 576h | 207h | 7,500 | 7,500 |
| 32 | 1.3.1 | **design** |  | 41d | 2019-08-19 A | 2019-09-30 | 28 | 53% | 19.39d | 2019-08-19 | 2019-09-30 | 41d | 0d |  |  | 312h | 207h |  |  |
| 33 | 1.3.1.1 | E-R Diagram |  | 7d | 2019-08-20 A | 2019-08-26 A | 28 | 100% |  | 2019-08-20 | 2019-08-26 | 7d |  | finish no earlier than 2019-08-26 | Jhumu; Mahin; Nafiz; sumaiya | 21h | 21h |  |  |
| 34 | 1.3.1.2 | Schema |  | 8d | 2019-08-27 A | 2019-09-04 A | 33 | 100% |  | 2019-08-27 | 2019-09-04 | 7d |  | finish no earlier than 2019-09-04 | Jhumu; Nafiz; sumaiya; Tarek | 84h | 84h |  |  |
| 35 | 1.3.1.3 | table creation |  | 6d | 2019-09-08 A | 2019-09-16 A | 34 | 100% |  | 2019-09-08 | 2019-09-16 | 6d |  | finish no earlier than 2019-09-01 | Tarek; Laptop [0.1%]; Mahin; Nafiz; sumaiya | 18h | 18h |  |  |
| 36 | 1.3.1.4 | data collection |  | 8d | 2019-09-17 A | 2019-09-22 A | 35 | 100% |  | 2019-09-17 | 2019-09-22 | 8d |  |  | Nafiz | 24h | 24h |  |  |
| 37 | 1.3.1.5 | query |  | 10d | 2019-09-23 A | 2019-09-30 A | 36 | 100% |  | 2019-09-23 | 2019-09-30 | 10d |  |  | Jhumu; Mahin; Laptop [0.1%] | 60h | 60h |  |  |
| 38 | 1.3.1.6 | front end development |  | 30d | 2019-08-19 | 2019-09-19 | 26 |  |  | 2019-08-19 | 2019-09-19 | 30d | 0d |  | Mahin | 90h |  |  |  |
| 39 | 1.3.1.7 | dbms connection |  | 5d | 2019-09-22 | 2019-09-24 | 38 |  |  | 2019-09-22 | 2019-09-24 | 5d | 0d |  | Tarek; Laptop [0.1%] | 15h |  |  |  |
| 40 | 1.3.2 | **development** |  | 54d | 2019-09-22 | 2020-02-09 |  |  |  | 2019-09-22 | 2020-02-09 | 54d | 0d |  |  | 264h |  | 7,500 | 7,500 |
| 41 | 1.3.2.1 | fingerprint sensor program |  | 10d | 2019-09-24 | 2019-10-01 | 39 |  |  | 2019-09-24 | 2019-10-01 | 10d | 0d |  | Tarek; Fingerprint sensor; Laptop [0.1%]; Alarm | 30h |  | 6,000 | 6,000 |
| 42 | 1.3.2.2 | interfacing with arduino |  | 11d | 2019-10-01 | 2019-10-09 | 41 |  |  | 2019-10-01 | 2019-10-09 | 11d | 0d |  | Mahin; sumaiya; ARDUINO; Laptop [0.1%] | 66h |  | 500 | 500 |
| 43 | 1.3.2.3 | interfacing rom with arduino |  | 12d | 2019-10-10 | 2019-10-21 | 42 |  |  | 2019-10-10 | 2019-10-21 | 12d | 0d |  | Ajmir; Jhumu; ARDUINO; Laptop [0.1%] | 72h |  | 500 | 500 |
| 44 | 1.3.2.4 | server development |  | 21d | 2019-09-22 | 2019-10-08 | 38 |  |  | 2019-09-22 | 2019-10-01 | 15d | 33d |  |  |  |  |  |  |
| 45 | 1.3.2.5 | connecting the server with arduino |  | 5d | 2019-10-22 | 2019-10-22 | 43 |  |  | 2019-10-22 | 2019-10-22 | 5d | 0d |  | Jhumu; Mahin; ARDUINO | 30h |  | 500 | 500 |
| 46 | 1.3.2.6 | wi fi module interfacing |  | 5d | 2019-10-23 | 2020-02-04 | 45 |  |  | 2019-10-23 | 2020-02-04 | 5d | 0d |  | Ajmir; Tarek; Laptop [0.1%] | 30h |  |  |  |
| 47 | 1.3.2.7 | connecting server |  | 6d | 2020-02-04 | 2020-02-09 | 46 |  |  | 2020-02-04 | 2020-02-09 | 6d | 0d |  | Ajmir; Nafiz | 36h |  |  |  |
| 48 | 1.4 | **integraion** |  | 30d | 2020-02-10 | 2020-03-03 | 31 |  |  | 2020-02-18 | 2020-03-12 | 30d | 0d |  |  | 180h |  |  |  |
| 49 | 1.4.1 | integration of fron end and back end |  | 30d | 2020-02-10 | 2020-03-03 | 31 |  |  | 2020-02-18 | 2020-03-12 | 30d | 0d |  | Ajmir; Mahin; Laptop [0.1%] | 180h |  |  |  |
| 50 | 1.5 | **test** |  | 30d | 2020-03-03 | 2020-03-24 |  |  |  | 2020-03-15 | 2020-04-07 | 30d | 0d |  |  | 240h |  |  |  |
| 51 | 1.5.1 | developer test |  | 10d | 2020-03-03 | 2020-03-10 | 49 |  |  | 2020-03-15 | 2020-03-22 | 10d | 0d |  | Mahin; Nafiz; sumaiya; Tarek | 120h |  |  |  |
| 52 | 1.5.2 | user and feedback |  | 20d | 2020-03-10 | 2020-03-24 | 51 |  |  | 2020-03-23 | 2020-04-07 | 20d | 0d |  | Ajmir; Jhumu | 120h |  |  |  |
| 53 | 1.6 | help file |  | 5d | 2020-03-25 | 2020-03-31 | 52 |  |  | 2020-04-07 | 2020-04-08 | 5d | 0d |  | Mahin; Nafiz; Laptop [0.1%] | 30h |  |  |  |
| 54 | 1.7 | documentation |  | 5d | 2020-03-31 | 2020-04-02 | 53 |  |  | 2020-04-09 | 2020-04-14 | 5d | 0d |  | Ajmir; Jhumu; Laptop [0.1%] | 30h |  |  |  |
| 55 | 1.8 | closing | milestone | 0d | 2020-04-02 | 2020-04-02 | 54 |  |  | 2020-04-14 | 2020-04-14 | 0d | 0d |  | Tarek |  |  |  |  |
